# Mr. Ali Mansouri Villa @ Plot 59, Mohd Bin Zayed City, Abu Dhabi

Schedule from Primavera P6, 2018-09-05 to 2019-05-04, data date 2018-09-05, A marks actual dates.
Must finish by 2019-05-05

## Calendars

- W.O. 282 Site Calendar: Mon-Fri 08:00-12:00, 13:00-17:00; Sat-Sun off. Exceptions (off unless hours are given): 2018-09-07, 2018-09-08 to 2018-09-09 08:00-16:00, 2018-09-11, 2018-09-14, 2018-09-15 to 2018-09-16 08:00-16:00, 2018-09-21, 2018-09-22 to 2018-09-23 08:00-16:00, 2018-09-28, 2018-09-29 to 2018-09-30 08:00-16:00, 2018-10-05, 2018-10-06 to 2018-10-07 08:00-16:00, 2018-10-12, 2018-10-13 to 2018-10-14 08:00-16:00, 2018-10-19, 2018-10-20 to 2018-10-21 08:00-16:00, 2018-10-26, 2018-10-27 to 2018-10-28 08:00-16:00, 2018-11-02, 2018-11-03 to 2018-11-04 08:00-16:00, 2018-11-09, 2018-11-10 to 2018-11-11 08:00-16:00, 2018-11-16, 2018-11-17 to 2018-11-18 08:00-16:00, 2018-11-19, 2018-11-23, 2018-11-24 to 2018-11-25 08:00-16:00, 2018-11-30, 2018-12-01 08:00-16:00, 2018-12-03, 2018-12-07, 2018-12-08 to 2018-12-09 08:00-16:00, 2018-12-14, 2018-12-15 to 2018-12-16 08:00-16:00, 2018-12-21, 2018-12-22 to 2018-12-23 08:00-16:00, 2018-12-28, 2018-12-29 to 2018-12-30 08:00-16:00, 2019-01-01, 2019-01-04, 2019-01-05 to 2019-01-06 08:00-16:00, 2019-01-11, 2019-01-12 to 2019-01-13 08:00-16:00, 2019-01-18, 2019-01-19 to 2019-01-20 08:00-16:00, 2019-01-25, 2019-01-26 to 2019-01-27 08:00-16:00, 2019-02-01, 2019-02-02 to 2019-02-03 08:00-16:00, 2019-02-08, 2019-02-09 to 2019-02-10 08:00-16:00, 2019-02-15, 2019-02-16 to 2019-02-17 08:00-16:00, 2019-02-22, 2019-02-23 to 2019-02-24 08:00-16:00, 2019-03-01, 2019-03-02 to 2019-03-03 08:00-16:00, 2019-03-08, 2019-03-09 to 2019-03-10 08:00-16:00, 2019-03-15, 2019-03-16 to 2019-03-17 08:00-16:00, 2019-03-22, 2019-03-23 to 2019-03-24 08:00-16:00, 2019-03-29, 2019-03-30 to 2019-03-31 08:00-16:00, 2019-04-05, 2019-04-06 to 2019-04-07 08:00-16:00, 2019-04-12, 2019-04-14 08:00-16:00, 2019-04-19, 2019-04-20 to 2019-04-21 08:00-16:00, 2019-04-26, 2019-04-27 to 2019-04-28 08:00-16:00, 2019-05-03, 2019-05-04 08:00-16:00.

## Schedule

| ID | WBS | Activity | Type | Duration | Start | Finish | Predecessors | Complete | Remaining | Planned start | Planned finish | Total float | Free float |
| --- | --- | --- | --- | --- | --- | --- | --- | --- | --- | --- | --- | --- | --- |
|  | 2 | **Project Miles Stone** |  |  | 2018-09-05 | 2019-05-04 |  |  |  |  |  |  |  |
| PM1000 |  | Project Start | milestone | 0d | 2018-09-05 | 2018-09-05 |  |  |  |  |  | 0d |  |
| PM1010 |  | Project Finish | milestone | 0d | 2019-05-04 | 2019-05-04 | PR1050, PR1060, PR1070, PR1080, PR1090, PR1100, PR1110, PR1120, PR1150, PR1160, PR1130 |  |  |  |  | 0d |  |
|  | 1 | **Preliminaries** |  |  | 2018-09-05 | 2019-05-04 |  |  |  |  |  |  |  |
| PR1000 |  | Site fencing repairing works |  | 5d | 2018-09-05 A | 2018-09-10 A | PM1000 SS | 100% |  |  |  |  |  |
| PR1010 |  | Sign board (repair) |  | 4d | 2018-09-05 A | 2018-09-09 A | PR1000 SS | 100% |  |  |  |  |  |
| PR1050 |  | Execution Team & Supervision |  | 200d | 2018-09-05 | 2019-05-02 | PM1000 SS |  |  |  |  | 1d |  |
| PR1060 |  | QHSE |  | 200d | 2018-09-05 | 2019-05-02 | PM1000 SS |  |  |  |  | 1d |  |
| PR1070 |  | Office OH's |  | 200d | 2018-09-05 | 2019-05-02 | PM1000 |  |  |  |  | 1d |  |
| PR1080 |  | Security & Storage |  | 200d | 2018-09-05 | 2019-05-02 | PM1000 |  |  |  |  | 1d |  |
| PR1090 |  | Equipment, plant & Machineries |  | 200d | 2018-09-05 | 2019-05-02 | PM1000 |  |  |  |  | 1d |  |
| PR1100 |  | Transportation |  | 200d | 2018-09-05 | 2019-05-02 | PM1000 |  |  |  |  | 1d |  |
| PR1110 |  | Insurance |  | 200d | 2018-09-05 | 2019-05-02 | PM1000 |  |  |  |  | 1d |  |
| PR1120 |  | Waste management |  | 200d | 2018-09-05 | 2019-05-02 | PM1000 |  |  |  |  | 1d |  |
| PR1150 |  | Compliance with authorities |  | 200d | 2018-09-05 | 2019-05-02 | PM1000 |  |  |  |  | 1d |  |
| PR1160 |  | Interior Design |  | 180d | 2018-09-05 | 2019-04-08 | PM1000 |  |  |  |  | 21d |  |
| PR1020 |  | Site office (1 caravan) |  | 4d | 2018-09-10 A | 2018-09-15 A | PR1010 | 100% |  |  |  |  |  |
| PR1030 |  | temporary offices |  | 4d | 2018-09-10 A | 2018-09-15 A | PR1020 SS | 100% |  |  |  |  |  |
| PR1040 |  | Temporary utilities |  | 3d | 2018-09-10 A | 2018-09-13 A | PR1030 SS | 100% |  |  |  |  |  |
| PR1140 |  | Final Cleaning |  | 5d | 2019-04-24 | 2019-04-29 | HO1020 |  |  |  |  | 0d |  |
| PR1130 |  | Demobilization |  | 4d | 2019-04-30 | 2019-05-04 | PR1140 |  |  |  |  | 0d |  |
|  | 6 | **Construction Stage** |  |  | 2018-09-15 | 2019-04-11 |  |  |  |  |  |  |  |
|  | 12 | **Second Floor** |  |  | 2018-09-15 | 2019-02-27 |  |  |  |  |  |  |  |
|  | 1 | **Civil Works** |  |  | 2018-09-15 | 2018-11-24 |  |  |  |  |  |  |  |
| SFCW1000 |  | Rectification of RCC structure (repair) |  | 3d | 2018-09-15 | 2018-09-17 | PR1040 |  |  |  |  | 26d | 0d |
| SFCW1020 |  | Complete remaining civil works (Block Works) |  | 18d | 2018-09-30 | 2018-10-20 | SFCW1010 |  |  |  |  | 26d | 0d |
| SFCW1030 |  | Internal Plaster Works |  | 24d | 2018-10-21 | 2018-11-17 | SFCW1020, SFPL1000, SFEL1000 |  |  |  |  | 37d | 0d |
| SFCW1010 |  | Construction of Parapet |  | 10d | 2018-11-15 A | 2018-09-29 | SFCW1000 |  | 51d | 2018-09-18 | 2018-09-29 | 26d | 0d |
| SFCW1040 |  | Water proofing for Wet Areas |  | 5d | 2018-11-18 | 2018-11-24 | SFCW1030 |  |  |  |  | 37d | 0d |

| ID | WBS | Activity | Duration | Start | Finish | Predecessors | Total float | Free float |
| --- | --- | --- | --- | --- | --- | --- | --- | --- |
|  | 11 | **Plumbing Works** |  | 2018-09-30 | 2019-02-27 |  |  |  |
| SFPL1000 |  | Plumbing 1st Fix | 9d | 2018-09-30 | 2018-10-09 | SFCW1020 SS | 46d | 9d |
| SFPL1010 |  | Plumbing Final Fix (Sanitary Fixtures) | 6d | 2019-02-21 | 2019-02-27 | SFPL1000, SFIFJW1010 | 37d |  |
|  | 10 | **Electrical Works** |  | 2018-09-30 | 2019-02-09 |  |  |  |
| SFEL1000 |  | Electrical 1st Fix | 9d | 2018-09-30 | 2018-10-09 | SFCW1020 SS | 46d | 9d |
| SFEL1010 |  | Electrical Final Fix (Lighting Fixtures) | 6d | 2019-02-03 | 2019-02-09 | SFEL1000, SFIFCW1000, SFIFCW1010, SFIFCW1020, SFIFWF1000, SFIFWF1010, SFIFWF1020 | 53d |  |
|  | 9 | **HVAC Works** |  | 2018-10-21 | 2018-12-20 |  |  |  |
| SFHV1000 |  | HVAC 1st Fix | 16d | 2018-10-21 | 2018-11-07 | SFCW1020 | 122d | 27d |
| SFHV1010 |  | HVAC Final Fix | 7d | 2018-12-13 | 2018-12-20 | SFHV1000, SFIFCW1000, SFIFCW1010, SFIFCW1020 | 95d |  |
|  | 3 | **Internal Finishes Works** |  | 2018-11-18 | 2019-02-02 |  |  |  |
|  | 4 | **Ceiling Works** |  | 2018-11-18 | 2018-12-12 |  |  |  |
| SFIFCW1010 |  | C2 - Gypsum Board Ceiling with bulkhead plain ceiling to Medium finishes area incl. paint works. | 18d | 2018-11-18 | 2018-12-11 | SFCW1030 | 38d | 1d |
| SFIFCW1020 |  | C1 - Gypsum board ceiling with bulkhead and corniche to High Finishes Area incl. paint works. | 4d | 2018-11-18 | 2018-11-22 | SFCW1030 | 71d | 0d |
| SFIFCW1000 |  | C5 - Gypsum Board ceiling with bulkhead plain ceiling to Medium Finishes MR (Wet Area) incl. paint works. | 6d | 2018-12-06 | 2018-12-12 | SFIFWF1000 | 37d | 0d |
|  | 1 | **Flooring Works** |  | 2018-11-24 | 2019-01-07 |  |  |  |
| SFIFFW1010 |  | F12 - Granite Tread & Risers to Steps PC Rate AED 400/-m2 | 10d | 2018-11-24 | 2018-12-06 | SFIFCW1020 | 71d | 0d |
| SFIFFW1000 |  | F2 - 60x60 cm Porcelain Tiles Mat Finish to Medium Finishes area PC Rate AED 70/- m2 | 21d | 2018-12-13 | 2019-01-07 | SFIFCW1000, SFIFCW1010 | 37d | 0d |
|  | 2 | **Skirting & Threshold** |  | 2018-12-08 | 2019-01-19 |  |  |  |
| SFIFSK1020 |  | S3 - Ceramic Skirting 10cm high to services area PC Rate AED 25/-m2 | 10d | 2018-12-08 | 2018-12-18 | SFIFFW1010 | 71d | 0d |
| SFIFSK1000 |  | Supply and fixing of 200mm wide marble threshold PC Rate AED 120/-m2 | 10d | 2019-01-08 | 2019-01-19 | SFIFFW1000 | 37d | 0d |
| SFIFSK1010 |  | S2 - Porcelain Skirting 10cm High to Medium Finishes area PC Rate AED 30/-m2 | 10d | 2019-01-08 | 2019-01-19 | SFIFFW1000 | 37d | 0d |
|  | 3 | **Wall Finishes** |  | 2018-11-25 | 2019-02-02 |  |  |  |
| SFIFWF1000 |  | W4 - 60x60 Porcelain Tiles to Wet Area in Medium Finishes area PC Rate AED 70/- m2 | 8d | 2018-11-25 | 2018-12-05 | SFCW1040 | 37d | 0d |
| SFIFWF1020 |  | W1 - Decorative Gypsum Plaster Wall High Finishes Area with paint | 4d | 2018-12-19 | 2018-12-23 | SFIFSK1020 | 71d | 34d |
| SFIFWF1010 |  | W2 - Emulsion Paint Finishes to Medium Finishes Area / Services Area | 12d | 2019-01-20 | 2019-02-02 | SFIFFW1000, SFIFSK1000, SFIFSK1010 | 37d | 0d |

| ID | WBS | Activity | Duration | Start | Finish | Predecessors | Total float | Free float |
| --- | --- | --- | --- | --- | --- | --- | --- | --- |
|  | 5 | **Joinery Works** |  | 2019-02-03 | 2019-02-25 |  |  |  |
| SFIFJW1000 |  | Fixing of Wooden Frame & Doors | 12d | 2019-02-03 | 2019-02-16 | SFIFWF1010, SFIFWF1020 | 37d | 0d |
| SFIFJW1010 |  | Vanity Counters with Korean top.PC Rate AED 1800/-m | 12d | 2019-02-07 | 2019-02-20 | SFIFJW1000 SS+4d | 37d | 0d |
| SFIFJW1020 |  | Wardrobes.PC Rate AED 2200/-m | 12d | 2019-02-12 | 2019-02-25 | SFIFJW1010 SS+4d | 39d |  |
|  | 7 | **External Finishes Works** |  | 2018-10-21 | 2019-01-22 |  |  |  |
| SFEF1000 |  | External Plaster | 24d | 2018-10-21 | 2018-11-17 | SFCW1020 | 26d | 0d |
| SFEF1010 |  | Facia - EIFS | 12d | 2018-11-07 | 2018-11-21 | SFEF1000 SS+15d | 68d | 0d |
| SFEF1020 |  | Decorative Mould around the External windows | 12d | 2018-11-07 | 2018-11-21 | SFEF1010 SS | 68d | 0d |
| SFEF1030 |  | Decorative Mould around the External Doors | 12d | 2018-11-07 | 2018-11-21 | SFEF1020 SS | 68d | 0d |
| SFEF1040 |  | 2 layer of 4mm thick SBS membrane to Open Terraces roof area | 7d | 2018-11-22 | 2018-11-29 | SFEF1030 | 68d | 0d |
| SFEF1050 |  | Supply and application of Protection screed 50mm thick over membrane to Open Terraces area | 2d | 2018-12-01 | 2018-12-04 | SFEF1040 | 68d | 0d |
| SFEF1060 |  | F11-60x60 Porcelain Tiles to Open terraces at 1st and 2nd Floor PC Rate AED 80/- m2 | 10d | 2018-12-05 | 2018-12-16 | SFEF1050 | 68d | 0d |
| SFEF1070 |  | External Skirting (Open Terraces) | 7d | 2018-12-17 | 2018-12-24 | SFEF1060 | 68d | 0d |
| SFEF1080 |  | Steel Baluster as per new 3D concept design | 10d | 2018-12-25 | 2019-01-06 | SFEF1070 | 68d | 0d |
| SFEF1090 |  | External Wall Painting Final Coat | 14d | 2019-01-07 | 2019-01-22 | SFEF1080, SFAG1010, SFAG1020 | 68d |  |
|  | 6 | **Aluminum & Glazing Works** |  | 2018-11-22 | 2018-12-18 |  |  |  |
| SFAG1010 |  | Fixing of Aluminum Doors | 10d | 2018-11-22 | 2018-12-05 | SFEF1030 | 94d | 0d |
| SFAG1020 |  | Fixing of Aluminum Windows | 10d | 2018-11-22 | 2018-12-05 | SFAG1010 SS | 94d | 26d |
| SFAG1000 |  | cast aluminium handrail with solid beach wood rail.PC Rate AED 1350/-m | 10d | 2018-12-08 | 2018-12-18 | SFIFFW1010 | 75d | 0d |
|  | 2 | **First Floor** |  | 2018-10-17 | 2019-03-17 |  |  |  |
|  | 1 | **Civil Works** |  | 2018-10-17 | 2018-11-29 |  |  |  |
| FFCW1000 |  | Rectification of RCC structure (repair) | 3d | 2018-10-17 | 2018-10-20 | PR1040 FS+28d | 22d | 0d |
| FFCW1010 |  | Construction of Parapet | 6d | 2018-10-21 | 2018-10-27 | FFCW1000 | 22d | 0d |
| FFCW1020 |  | Complete remaining civil works (Block Works) | 6d | 2018-10-28 | 2018-11-03 | FFCW1010 | 22d | 0d |
| FFCW1030 |  | Internal Plaster Works | 14d | 2018-11-07 | 2018-11-24 | FFCW1020, FFPL1000, FFEL1000 | 22d | 0d |
| FFCW1040 |  | Water proofing for Wet Areas | 5d | 2018-11-25 | 2018-11-29 | FFCW1030 | 86d | 64d |

| ID | WBS | Activity | Duration | Start | Finish | Predecessors | Total float | Free float |
| --- | --- | --- | --- | --- | --- | --- | --- | --- |
|  | 11 | **Plumbing Works** |  | 2018-10-28 | 2019-02-26 |  |  |  |
| FFPL1000 |  | Plumbing 1st Fix | 9d | 2018-10-28 | 2018-11-06 | FFCW1020 SS | 22d | 0d |
| FFPL1010 |  | Plumbing Final Fix (Sanitary Fixtures) | 6d | 2019-02-20 | 2019-02-26 | FFPL1000, FFIFJW1030 | 38d |  |
|  | 10 | **Electrical Works** |  | 2018-10-28 | 2019-03-17 |  |  |  |
| FFEL1000 |  | Electrical 1st Fix | 9d | 2018-10-28 | 2018-11-06 | FFCW1020 SS | 22d | 0d |
| FFEL1010 |  | Electrical Final Fix (Lighting Fixtures) | 6d | 2019-03-11 | 2019-03-17 | FFEL1000, FFIFCW1030, FFIFWF1040 | 22d |  |
|  | 9 | **HVAC Works** |  | 2018-11-04 | 2019-01-10 |  |  |  |
| FFHV1000 |  | HVAC 1st Fix | 16d | 2018-11-04 | 2018-11-22 | FFCW1020 | 23d | 1d |
| FFHV1010 |  | HVAC Final Fix | 7d | 2019-01-03 | 2019-01-10 | FFHV1000, FFIFCW1030 | 78d |  |
|  | 3 | **Internal Finishes Works** |  | 2018-11-25 | 2019-03-10 |  |  |  |
|  | 4 | **Ceiling Works** |  | 2018-11-25 | 2019-01-02 |  |  |  |
| FFIFCW1000 |  | C1 - Gypsum board ceiling with bulkhead and corniche to High Finishes Area incl. paint works. | 9d | 2018-11-25 | 2018-12-06 | FFCW1030, FFHV1000, FFEL1000 | 22d | 0d |
| FFIFCW1010 |  | C2 - Gypsum Board Ceiling with bulkhead plain ceiling to Medium finishes area incl. paint works. | 9d | 2018-12-08 | 2018-12-17 | FFIFCW1000 | 22d | 0d |
| FFIFCW1020 |  | C4 - Gypsum Board ceiling with bulkhead and corniche MR to High Finishes (Wet Area) incl. paint works. | 6d | 2018-12-18 | 2018-12-24 | FFIFCW1010 | 22d | 0d |
| FFIFCW1030 |  | C5 - Gypsum Board ceiling with bulkhead plain ceiling to Medium Finishes MR (Wet Area) incl. paint works. | 7d | 2018-12-25 | 2019-01-02 | FFIFCW1020 | 22d | 0d |
|  | 1 | **Flooring Works** |  | 2019-01-03 | 2019-01-23 |  |  |  |
| FFIFFW1000 |  | F1 - 20mm thick Marble Crema Marfil to High Finishes area PC Rate AED 400/- m2 | 10d | 2019-01-03 | 2019-01-14 | FFIFCW1030 | 22d | 0d |
| FFIFFW1010 |  | F2 - 60x60 cm Porcelain Tiles Mat Finish to Medium Finishes area PC Rate AED 70/- m2 | 11d | 2019-01-03 | 2019-01-15 | FFIFFW1000 SS | 22d | 0d |
| FFIFFW1020 |  | F12 - Granite Tread & Risers to Steps PC Rate AED 400/-m2 | 7d | 2019-01-16 | 2019-01-23 | FFIFFW1010 | 85d |  |
|  | 2 | **Skirting & Threshold** |  | 2019-01-16 | 2019-01-28 |  |  |  |
| FFIFSK1000 |  | Supply and fixing of 200mm wide marble threshold PC Rate AED 120/-m2 | 7d | 2019-01-16 | 2019-01-23 | FFIFFW1010 | 22d | 0d |
| FFIFSK1010 |  | S1 - Marble Skirting 15cm high to High Finishes area PC Rate AED 120/-m2 | 7d | 2019-01-19 | 2019-01-26 | FFIFSK1000 SS+2d | 22d | 0d |
| FFIFSK1020 |  | S2 - Porcelain Skirting 10cm High to Medium Finishes area PC Rate AED 30/-m2 | 7d | 2019-01-21 | 2019-01-28 | FFIFSK1010 SS+2d | 22d | 0d |
|  | 3 | **Wall Finishes** |  | 2019-01-29 | 2019-03-10 |  |  |  |
| FFIFWF1000 |  | W1 - Decorative Gypsum Plaster Wall High Finishes Area with paint | 7d | 2019-01-29 | 2019-02-05 | FFIFSK1020 | 22d | 0d |
| FFIFWF1010 |  | W2 - Emulsion Paint Finishes to Medium Finishes Area / Services Area | 9d | 2019-02-06 | 2019-02-16 | FFIFWF1000 | 22d | 0d |
| FFIFWF1020 |  | W4 - 60x60 Porcelain Tiles to Wet Area in Medium Finishes area PC Rate AED 70/- m2 | 8d | 2019-02-17 | 2019-02-25 | FFCW1040, FFIFWF1010 | 22d | 0d |
| FFIFWF1030 |  | W5 - Marbles tiles to wet area in High Finishes area PC Rate AED 400/- m2 | 6d | 2019-02-26 | 2019-03-04 | FFIFWF1020 | 22d | 0d |
| FFIFWF1040 |  | W6 - Decorative Paint to Wet Area in High Finishes area | 5d | 2019-03-05 | 2019-03-10 | FFIFWF1030 | 22d | 0d |

| ID | WBS | Activity | Duration | Start | Finish | Predecessors | Total float | Free float |
| --- | --- | --- | --- | --- | --- | --- | --- | --- |
|  | 5 | **Joinery Works** |  | 2019-01-24 | 2019-03-07 |  |  |  |
| FFIFJW1000 |  | Fixing of Wooden Frame & Doors | 9d | 2019-01-24 | 2019-02-03 | FFIFSK1000 | 30d | 0d |
| FFIFJW1010 |  | Kitchen/Pantry Cabinets Base Unit with Marble counter top.PC Rate AED 1650/-m | 6d | 2019-02-04 | 2019-02-10 | FFIFJW1000 | 30d | 0d |
| FFIFJW1020 |  | Kitchen/Pantry cabinets top unit.PC Rate AED 800/-m | 6d | 2019-02-04 | 2019-02-10 | FFIFJW1010 SS | 30d | 0d |
| FFIFJW1030 |  | Vanity Counters with Korean top.PC Rate AED 1800/-m | 8d | 2019-02-11 | 2019-02-19 | FFIFJW1020 | 30d | 0d |
| FFIFJW1040 |  | Wardrobes.PC Rate AED 2200/-m | 14d | 2019-02-20 | 2019-03-07 | FFIFJW1030 | 30d |  |
|  | 7 | **External Finishes Works** |  | 2018-11-18 | 2019-02-17 |  |  |  |
| FFEW1000 |  | External Plaster | 24d | 2018-11-18 | 2018-12-18 | FFCW1020, SFEF1000 | 26d | 0d |
| FFEW1010 |  | Facia - EIFS | 12d | 2018-12-09 | 2018-12-22 | FFEW1000 SS+15d | 46d | 0d |
| FFEW1020 |  | Decorative Mould around the External windows | 12d | 2018-12-09 | 2018-12-22 | FFEW1010 SS | 46d | 0d |
| FFEW1030 |  | Decorative Mould around the External Doors | 12d | 2018-12-09 | 2018-12-22 | FFEW1020 SS | 46d | 0d |
| FFEW1040 |  | 2 layer of 4mm thick SBS membrane to Open Terraces roof area | 7d | 2018-12-23 | 2018-12-30 | FFEW1030 | 46d | 0d |
| FFEW1050 |  | Supply and application of Protection screed 50mm thick over membrane to Open Terraces area | 2d | 2018-12-31 | 2019-01-02 | FFEW1040 | 46d | 0d |
| FFEW1060 |  | F11-60x60 Porcelain Tiles to Open terraces at 1st and 2nd Floor PC Rate AED 80/- m2 | 9d | 2019-01-03 | 2019-01-13 | FFEW1050 | 46d | 0d |
| FFEW1070 |  | External Skirting (Open Terraces) | 6d | 2019-01-14 | 2019-01-20 | FFEW1060 | 46d | 0d |
| FFEW1080 |  | Steel Baluster as per new 3D concept design | 10d | 2019-01-21 | 2019-01-31 | FFEW1070 | 46d | 0d |
| FFEW1090 |  | External Wall Painting Final Coat | 14d | 2019-02-02 | 2019-02-17 | FFEW1080, FFAG1010, FFAG1020 | 46d |  |
|  | 6 | **Aluminum & Glazing Works** |  | 2018-12-19 | 2019-01-06 |  |  |  |
| FFAG1000 |  | cast aluminium handrail with solid beach wood rail.PC Rate AED 1350/-m | 12d | 2018-12-19 | 2019-01-02 | SFAG1000 | 75d | 0d |
| FFAG1010 |  | Fixing of Aluminum Doors | 12d | 2018-12-23 | 2019-01-06 | FFEW1030 | 68d | 0d |
| FFAG1020 |  | Fixing of Aluminum Windows | 12d | 2018-12-23 | 2019-01-06 | FFAG1010 SS | 68d | 22d |
|  | 3 | **Ground Floor** |  | 2018-10-24 | 2019-04-11 |  |  |  |
|  | 1 | **Civil Works** |  | 2018-10-24 | 2018-12-16 |  |  |  |
| GFCW1000 |  | Repair Water proofing for Substructure | 3d | 2018-10-24 | 2018-10-27 | PR1040 FS+34d | 0d |  |
| GFCW1010 |  | Rectification of RCC structure (repair) | 3d | 2018-10-28 | 2018-10-30 | GFCW1000 | 0d |  |
| GFCW1020 |  | Construction of Parapet | 6d | 2018-10-31 | 2018-11-06 | GFCW1010 | 0d |  |
| GFCW1030 |  | Complete remaining civil works (Block Works) | 12d | 2018-11-07 | 2018-11-21 | GFCW1020 | 0d |  |
| GFCW1040 |  | Internal Plaster Works | 14d | 2018-11-22 | 2018-12-10 | GFCW1030, GFPL1000, GFEL1000 | 2d | 0d |
| GFCW1050 |  | Water proofing for wet areas | 5d | 2018-12-11 | 2018-12-16 | GFCW1040 | 43d | 41d |

| ID | WBS | Activity | Duration | Start | Finish | Predecessors | Total float | Free float |
| --- | --- | --- | --- | --- | --- | --- | --- | --- |
|  | 11 | **Plumbing Works** |  | 2018-11-07 | 2019-04-11 |  |  |  |
| GFPL1000 |  | Plumbing 1st Fix | 9d | 2018-11-07 | 2018-11-17 | GFCW1030 SS | 5d | 3d |
| GFPL1010 |  | Plumbing Final Fix (Sanitary Fixtures) | 6d | 2019-04-06 | 2019-04-11 | GFPL1000, GFJW1040 | 0d |  |
|  | 10 | **Electrical Works** |  | 2018-11-07 | 2019-02-05 |  |  |  |
| GFEL1000 |  | Electrical 1st Fix | 9d | 2018-11-07 | 2018-11-17 | GFCW1030 SS | 5d | 3d |
| GFEL1010 |  | Electrical Final Fix (Lighting Fixtures) | 6d | 2019-01-30 | 2019-02-05 | GFEL1000, GFIFCW1050 | 56d |  |
|  | 9 | **HVAC Works** |  | 2018-11-22 | 2019-02-07 |  |  |  |
| GFHV1000 |  | HVAC 1st Fix | 16d | 2018-11-22 | 2018-12-12 | GFCW1030 | 0d |  |
| GFHV1010 |  | HVAC Final Fix | 8d | 2019-01-30 | 2019-02-07 | GFHV1000, GFIFCW1050 | 54d |  |
|  | 3 | **Internal Finishes Works** |  | 2018-12-13 | 2019-04-09 |  |  |  |
|  | 4 | **Ceiling Works** |  | 2018-12-13 | 2019-01-29 |  |  |  |
| GFIFCW1000 |  | C1 - Gypsum board ceiling with bulkhead and corniche to High Finishes Area incl. paint works. | 14d | 2018-12-13 | 2018-12-29 | GFHV1000, GFEL1000, GFPL1000, GFCW1040 | 0d |  |
| GFIFCW1010 |  | C2 - Gypsum Board Ceiling with bulkhead plain ceiling to Medium finishes area incl. paint works. | 14d | 2018-12-18 | 2019-01-03 | GFIFCW1000 SS+4d | 0d |  |
| GFIFCW1020 |  | C3 - 60x60 Gypsum Ceiling tiles to Services area | 8d | 2019-01-05 | 2019-01-13 | GFIFCW1010 | 0d |  |
| GFIFCW1030 |  | C4 - Gypsum Board ceiling with bulkhead and corniche MR to High Finishes (Wet Area) incl. paint works. | 3d | 2019-01-14 | 2019-01-16 | GFIFCW1020 | 54d | 0d |
| GFIFCW1040 |  | C5 - Gypsum Board ceiling with bulkhead plain ceiling to Medium Finishes MR (Wet Area) incl. paint works. | 5d | 2019-01-17 | 2019-01-22 | GFIFCW1030 | 54d | 0d |
| GFIFCW1050 |  | C6 - Calcium Silicate 60x60 ceiling tiles to wet area in Services area. | 6d | 2019-01-23 | 2019-01-29 | GFIFCW1040 | 54d | 0d |
|  | 1 | **Flooring Works** |  | 2019-01-14 | 2019-03-03 |  |  |  |
| GFIFFW1000 |  | F1 - 20mm thick Marble Crema Marfil to High Finishes area PC Rate AED 400/- m2 | 12d | 2019-01-14 | 2019-01-27 | GFIFCW1020 | 0d |  |
| GFIFFW1010 |  | F2 - 60x60 cm Porcelain Tiles Mat Finish to Medium Finishes area PC Rate AED 70/- m2 | 10d | 2019-01-19 | 2019-01-29 | GFIFFW1000 SS+4d | 0d |  |
| GFIFFW1020 |  | F3 - 40x40cm Ceramic Tiles to Services Area PC Rate AED 35/- m2. | 10d | 2019-01-23 | 2019-02-03 | GFIFFW1010 SS+4d | 0d |  |
| GFIFFW1030 |  | F4 - Carpet Flooring to Prayer room PC Rate AED 180/- m2 | 3d | 2019-02-04 | 2019-02-06 | GFIFFW1020 | 0d |  |
| GFIFFW1040 |  | F5 - 8mm thick Rubber Flooring to Gymnasium PC Rate AED 180/- m2 | 5d | 2019-02-07 | 2019-02-12 | GFIFFW1030 | 0d |  |
| GFIFFW1050 |  | F6 - 60x60 Non Slip Porcelain Tiles to Swimming Pool Deck PC Rate AED 70/- m2 | 4d | 2019-02-13 | 2019-02-17 | GFIFFW1040 | 0d |  |
| GFIFFW1060 |  | F8 - Epoxy Flooring to Services Area PC Rate AED 55/-m2 | 7d | 2019-02-18 | 2019-02-25 | GFIFFW1050 | 0d |  |
| GFIFFW1070 |  | F12 - Granite Tread & Risers to Steps PC Rate AED 400/-m2 | 5d | 2019-02-26 | 2019-03-03 | GFIFFW1060 | 52d |  |

| ID | WBS | Activity | Duration | Start | Finish | Predecessors | Total float | Free float |
| --- | --- | --- | --- | --- | --- | --- | --- | --- |
|  | 2 | **Skirting & Threshold** |  | 2019-02-26 | 2019-04-02 |  |  |  |
| GFIFSK1000 |  | Supply and fixing of 200mm wide marble threshold PC Rate AED 120/-m2 | 7d | 2019-02-26 | 2019-03-05 | GFIFFW1060 | 0d |  |
| GFIFSK1010 |  | S1 - Marble Skirting 15cm high to High Finishes area PC Rate AED 120/-m2 | 7d | 2019-03-06 | 2019-03-13 | GFIFSK1000 | 8d | 0d |
| GFIFSK1020 |  | S2 - Porcelain Skirting 10cm High to Medium Finishes area PC Rate AED 30/-m2 | 7d | 2019-03-06 | 2019-03-13 | GFIFSK1010 SS | 8d | 0d |
| GFIFSK1030 |  | S3 - Ceramic Skirting 10cm high to services area PC Rate AED 25/-m2 | 6d | 2019-03-14 | 2019-03-20 | GFIFSK1020 | 8d | 0d |
| GFIFSK1040 |  | S4 - MDF Skirting 8cm high to Prayer room and Gym PC Rate AED 30/-m2 | 3d | 2019-03-21 | 2019-03-24 | GFIFSK1030 | 8d | 0d |
| GFIFSK1050 |  | S5 - Epoxy Skirting to Services area PC Rate AED 15/-m2 | 8d | 2019-03-25 | 2019-04-02 | GFIFSK1040 | 8d |  |
|  | 3 | **Wall Finishes** |  | 2019-02-04 | 2019-04-09 |  |  |  |
| GFIFWF1000 |  | W5 - Marbles tiles to wet area in High Finishes area PC Rate AED 400/- m2 | 9d | 2019-02-04 | 2019-02-13 | GFIFFW1020, GFCW1050 | 2d | 0d |
| GFIFWF1010 |  | W4 - 60x60 Porcelain Tiles to Wet Area in Medium Finishes area PC Rate AED 70/- m2 | 9d | 2019-02-14 | 2019-02-24 | GFIFWF1000 | 2d | 0d |
| GFIFWF1020 |  | W3 - 40x40 Ceramic Wall Tiles wet area to Services area PC rate AED 35/- m2 | 8d | 2019-02-25 | 2019-03-05 | GFIFWF1010 | 2d | 0d |
| GFIFWF1030 |  | W1 - Decorative Gypsum Plaster Wall High Finishes Area with paint | 12d | 2019-03-06 | 2019-03-19 | GFIFWF1020 | 2d | 0d |
| GFIFWF1040 |  | W2 - Emulsion Paint Finishes to Medium Finishes Area / Services Area | 12d | 2019-03-11 | 2019-03-24 | GFIFWF1030 SS+4d | 2d | 0d |
| GFIFWF1050 |  | W6 - Decorative Paint to Wet Area in High Finishes area | 6d | 2019-03-25 | 2019-03-31 | GFIFWF1040 | 2d | 0d |
| GFIFWF1060 |  | W6 - Epoxy Paint to Services area | 8d | 2019-04-01 | 2019-04-09 | GFIFWF1050 | 2d |  |
|  | 5 | **Joinery Works** |  | 2019-03-06 | 2019-04-04 |  |  |  |
| GFJW1000 |  | Fixing of Wooden Frame & Doors | 14d | 2019-03-06 | 2019-03-21 | GFIFSK1000 | 0d |  |
| GFJW1010 |  | Kitchen/Pantry Cabinets Base Unit with Marble counter top.PC Rate AED 1650/-m | 6d | 2019-03-11 | 2019-03-17 | GFJW1000 SS+4d | 0d |  |
| GFJW1020 |  | Kitchen/Pantry cabinets top unit.PC Rate AED 800/-m | 6d | 2019-03-14 | 2019-03-20 | GFJW1010 SS+3d | 0d |  |
| GFJW1030 |  | Kitchen Sink with accessories Rate AED 1500/-set | 3d | 2019-03-21 | 2019-03-24 | GFJW1020 | 0d |  |
| GFJW1040 |  | Vanity Counters with Korean top.PC Rate AED 1800/-m | 10d | 2019-03-25 | 2019-04-04 | GFJW1030 | 0d |  |
| GFJW1050 |  | Wardrobes.PC Rate AED 2200/-m | 7d | 2019-03-28 | 2019-04-04 | GFJW1040 SS+3d | 6d |  |
|  | 7 | **External Finishes Works** |  | 2018-12-19 | 2019-03-12 |  |  |  |
| GFEF1000 |  | External Plaster | 24d | 2018-12-19 | 2019-01-16 | GFCW1030, FFEW1000 | 26d | 0d |
| GFEF1010 |  | Facia - EIFS | 12d | 2019-01-07 | 2019-01-20 | GFEF1000 SS+15d | 26d | 0d |
| GFEF1020 |  | Decorative Mould around the External windows | 12d | 2019-01-07 | 2019-01-20 | GFEF1010 SS | 26d | 0d |
| GFEF1030 |  | Decorative Mould around the External Doors | 12d | 2019-01-07 | 2019-01-20 | GFEF1020 SS | 26d | 0d |
| GFEF1040 |  | F9 - Porcelain Tiles to Covered Terraces area at GF PC Rate AED 180/- m2 | 10d | 2019-01-21 | 2019-01-31 | GFEF1030 | 26d | 0d |
| GFEF1050 |  | F10-60x60 Porcelain Tiles Stone Finish to Covered Terraces at 1st and 2nd floor PC Rate AED 80/- m2 | 10d | 2019-01-26 | 2019-02-05 | GFEF1040 SS+4d | 26d | 0d |
| GFEF1060 |  | Granite Tread & Risers to External Steps | 8d | 2019-02-06 | 2019-02-14 | GFEF1050 | 26d | 0d |
| GFEF1070 |  | Cement Board external Ceiling 9mm thick painted with mini texture paint as per approved sample | 6d | 2019-02-16 | 2019-02-21 | GFEF1060 | 26d | 0d |
| GFEF1080 |  | Electrical room preparations (Finishes Works Only) | 6d | 2019-02-23 | 2019-02-28 | GFEF1070 | 26d | 0d |
| GFEF1090 |  | External Wall Painting Final Coat | 10d | 2019-03-02 | 2019-03-12 | GFEF1080, GFAG1020, GFAG1010 | 26d |  |

| ID | WBS | Activity | Duration | Start | Finish | Predecessors | Total float | Free float | Constraint |
| --- | --- | --- | --- | --- | --- | --- | --- | --- | --- |
|  | 6 | **Aluminum & Glazing Works** |  | 2019-01-03 | 2019-02-05 |  |  |  |  |
| GFAG1000 |  | cast aluminium handrail with solid beach wood rail.PC Rate AED 1350/-m | 10d | 2019-01-03 | 2019-01-14 | FFAG1000 | 75d |  |  |
| GFAG1010 |  | Fixing of Aluminum Doors | 14d | 2019-01-21 | 2019-02-05 | GFEF1030 | 46d | 0d |  |
| GFAG1020 |  | Fixing of Aluminum Windows | 14d | 2019-01-21 | 2019-02-05 | GFAG1010 SS | 46d | 20d |  |
|  | 5 | **Top Roof Plan** |  | 2018-11-18 | 2018-12-25 |  |  |  |  |
| TR1000 |  | Combo Roof System | 18d | 2018-11-18 | 2018-12-11 | SFEF1000 | 91d | 0d |  |
| TR1010 |  | Roof tiling works Terrazzo Tiles 40x40 over Combo Roofing System | 12d | 2018-12-12 | 2018-12-25 | TR1000 | 91d |  |  |
|  | 4 | **Specialty Works** |  | 2018-09-30 | 2019-04-11 |  |  |  |  |
|  | 1 | **Elevator Works** |  | 2018-09-30 | 2019-04-11 |  |  |  |  |
| SPEL1000 |  | Elevator Works 1st Fix | 30d | 2018-09-30 | 2018-11-03 | PR1040 | 0d |  | start on 2018-09-30 |
| SPEL1010 |  | Elevator Procurement/Manufacturing/Delivery | 153d | 2018-09-30 | 2019-03-31 | SPEL1000 SS | 0d |  |  |
| SPEL1020 |  | Elevator Works Final Fix | 10d | 2019-04-01 | 2019-04-11 | SPEL1010 | 0d |  |  |
|  | 2 | **Swimming Pool Works** |  | 2018-09-30 | 2018-12-17 |  |  |  |  |
| SPSW1000 |  | Excavation Works | 7d | 2018-09-30 | 2018-10-07 | PR1040 | 0d |  | start on 2018-09-30 |
| SPSW1010 |  | Civil Works | 14d | 2018-10-08 | 2018-10-23 | SPSW1000 | 98d | 0d |  |
| SPSW1020 |  | MEP 1st Fix | 7d | 2018-10-24 | 2018-10-31 | SPSW1010 | 98d | 0d |  |
| SPSW1030 |  | Concrete Works | 18d | 2018-11-01 | 2018-11-22 | SPSW1020 | 98d | 0d |  |
| SPSW1040 |  | Waterproofing Works | 7d | 2018-11-24 | 2018-12-01 | SPSW1030 | 98d | 0d |  |
| SPSW1050 |  | Finishing Works | 12d | 2018-12-04 | 2018-12-17 | SPSW1040 | 98d |  |  |
|  | 1 | **External & Landscaping Works** |  | 2018-10-10 | 2019-02-27 |  |  |  |  |
| EXT1000 |  | Boundary Wall Works | 45d | 2018-10-10 | 2018-12-04 | PR1040 | 0d |  | mandatory start 2018-10-10 |
| EXT1010 |  | External MEP Services | 7d | 2018-12-05 | 2018-12-12 | EXT1000 | 37d | 0d |  |
| EXT1020 |  | Heel Kerb | 9d | 2018-12-13 | 2018-12-23 | EXT1010 | 37d | 0d |  |
| EXT1030 |  | Stamp Concrete | 14d | 2018-12-24 | 2019-01-09 | EXT1020 | 37d | 0d |  |
| EXT1040 |  | Walk Ways Stamped Concrete | 7d | 2019-01-10 | 2019-01-17 | EXT1030 | 37d | 0d |  |
| EXT1050 |  | Wooden Pergola | 8d | 2019-01-19 | 2019-01-27 | EXT1040 | 37d | 0d |  |
| EXT1060 |  | Car PArking Shades | 8d | 2019-01-28 | 2019-02-05 | EXT1050 | 37d | 0d |  |
| EXT1070 |  | Soft Landscape | 11d | 2019-02-06 | 2019-02-18 | EXT1060 | 37d | 0d |  |
| EXT1080 |  | Main Entrance Gate 6m wide | 8d | 2019-02-19 | 2019-02-27 | EXT1070 | 37d |  |  |

| ID | WBS | Activity | Duration | Start | Finish | Predecessors | Total float |
| --- | --- | --- | --- | --- | --- | --- | --- |
|  | 7 | **Handing Over Stage** |  | 2019-04-14 | 2019-04-23 |  |  |
| HO1000 |  | Testing & Commissioning | 7d | 2019-04-14 | 2019-04-21 | GFPL1010, GFEL1010, GFHV1010, FFHV1010, FFEL1010, FFPL1010, SFHV1010, SFEL1010, SFPL1010, TR1010, SPSW1050, SPEL1020 | 0d |
| HO1010 |  | Snagging/Desnagging | 7d | 2019-04-14 | 2019-04-21 | HO1000 SS, GFEF1090, GFAG1000, GFJW1050, FFEW1090, FFIFJW1040, SFEF1090, SFIFJW1020, EXT1080, GFIFSK1050, GFIFWF1060 | 0d |
| HO1020 |  | Submission of Handing Over Documents | 2d | 2019-04-22 | 2019-04-23 | HO1010 | 0d |
